# SEDS

Schedule from MS Project, 2014-04-01 to 2014-07-07, status date 2014-07-08, costs in kn, A marks actual dates.
SEDS

## Calendars

- Standard: Mon-Fri 08:00-12:00, 13:00-17:00; Sat-Sun off.

## Resources

| Resource | Rate |
| --- | --- |
| Ivan | 100 |
| Klijent |  |

## Schedule

| ID | WBS | Task | Type | Duration | Start | Finish | Predecessors | Complete | Remaining | Total slack | Resources | Work | Actual work | Cost | Actual cost |
| --- | --- | --- | --- | --- | --- | --- | --- | --- | --- | --- | --- | --- | --- | --- | --- |
| 1 | 1 | **Sustav za evidenciju diplomiranih studenata** |  | 69.62d | 2014-04-01 A | 2014-07-07 |  | 99% | 0d | 0d |  | 654h | 654h | 62,500 | 62,500 |
| 2 | 1.1 | POČETAK PROJEKTA | milestone | 1d | 2014-04-01 A | 2014-04-01 |  | 100% | 0d | 68.62d |  |  |  |  |  |
| 3 | 1.2 | **PLANIRANJE PROJEKTA** |  | 9.88d | 2014-04-01 A | 2014-04-14 A |  | 100% |  |  |  | 97h | 97h | 8,900 | 8,900 |
| 4 | 1.2.1 | Sastanak sa klijentom |  | 1d | 2014-04-01 A | 2014-04-01 A |  | 100% |  |  | Ivan; Klijent | 17h | 17h | 900 | 900 |
| 5 | 1.2.2 | Definiranje korisničkih zahtijeva |  | 2d | 2014-04-02 A | 2014-04-03 A | 4 | 100% |  |  | Ivan | 16h | 16h | 1,600 | 1,600 |
| 6 | 1.2.3 | Odabir alata I metoda za rad |  | 1d | 2014-04-03 A | 2014-04-04 A | 5 | 100% |  |  | Ivan | 8h | 8h | 800 | 800 |
| 7 | 1.2.4 | Izrada gantogama |  | 2d | 2014-04-04 A | 2014-04-08 A | 6 | 100% |  |  | Ivan | 16h | 16h | 1,600 | 1,600 |
| 8 | 1.2.5 | Izrada proračuna |  | 3d | 2014-04-08 A | 2014-04-11 A | 7 | 100% |  |  | Ivan | 24h | 24h | 2,400 | 2,400 |
| 9 | 1.2.6 | Izrada ponude klijentu |  | 1d | 2014-04-11 A | 2014-04-11 A | 8 | 100% |  |  | Ivan | 8h | 8h | 800 | 800 |
| 10 | 1.2.7 | Izrada početne dokumentacije |  | 1d | 2014-04-14 A | 2014-04-14 A | 9 | 100% |  |  | Ivan | 8h | 8h | 800 | 800 |
| 11 | 1.3 | PLANIRANJE ZAVRŠENO | milestone | 0d | 2014-04-14 A | 2014-04-14 A | 10 | 100% |  |  | Ivan |  |  |  |  |
| 12 | 1.4 | **MODELIRANJE PROJEKTA** |  | 13.62d | 2014-04-14 A | 2014-05-02 A | 11 | 100% |  |  |  | 120h | 120h | 12,000 | 12,000 |
| 13 | 1.4.1 | Opis I specifikacija korisničkih zahtjeva |  | 2d | 2014-04-14 A | 2014-04-16 A | 11 | 100% |  |  | Ivan | 16h | 16h | 1,600 | 1,600 |
| 14 | 1.4.2 | **Modeliranje UML Diagrama** |  | 2.75d | 2014-04-16 A | 2014-04-21 A |  | 100% |  |  |  | 24h | 24h | 2,400 | 2,400 |
| 15 | 1.4.2.1 | Izrada diagrama slučajeva korištenja |  | 1d | 2014-04-16 A | 2014-04-17 A | 13 | 100% |  |  | Ivan | 8h | 8h | 800 | 800 |
| 16 | 1.4.2.2 | Izrada diagrama sekvence |  | 1d | 2014-04-17 A | 2014-04-18 A | 15 | 100% |  |  | Ivan | 8h | 8h | 800 | 800 |
| 17 | 1.4.2.3 | Izrada diagrama aktivnosti |  | 1d | 2014-04-18 A | 2014-04-21 A | 16 | 100% |  |  | Ivan | 8h | 8h | 800 | 800 |
| 18 | 1.4.3 | Izrada diagrama klase |  | 2d | 2014-04-21 A | 2014-04-23 A | 17 | 100% |  |  | Ivan | 16h | 16h | 1,600 | 1,600 |
| 19 | 1.4.4 | Modeliranje baze podataka |  | 3d | 2014-04-23 A | 2014-04-25 A | 18 | 100% |  |  | Ivan | 24h | 24h | 2,400 | 2,400 |
| 20 | 1.4.5 | Izrada ERA modela |  | 1d | 2014-04-25 A | 2014-04-28 A | 19 | 100% |  |  | Ivan | 8h | 8h | 800 | 800 |
| 21 | 1.4.6 | Generiranje baze podataka |  | 1d | 2014-04-28 A | 2014-04-30 A | 20 | 100% |  |  | Ivan | 8h | 8h | 800 | 800 |
| 22 | 1.4.7 | Izrada dizajna aplikacije |  | 3d | 2014-04-29 A | 2014-05-02 A | 21 | 100% |  |  | Ivan | 24h | 24h | 2,400 | 2,400 |
| 23 | 1.5 | MODELIRANJE ZAVRŠENO | milestone | 0d | 2014-05-02 A | 2014-05-02 A | 22 | 100% |  |  |  |  |  |  |  |
| 24 | 1.6 | **REALIZACIJA** |  | 46.12d | 2014-05-02 A | 2014-07-07 A | 23 | 100% |  |  |  | 437h | 437h | 41,600 | 41,600 |
| 25 | 1.6.1 | Sastanak sa klijentom |  | 1d | 2014-05-02 A | 2014-05-05 A | 23 | 100% |  |  | Ivan; Klijent | 15h | 15h | 800 | 800 |
| 26 | 1.6.2 | Prijedlog izrade aplikacije |  | 1d | 2014-05-05 A | 2014-05-06 A | 25 | 100% |  |  | Ivan; Klijent | 15h | 15h | 800 | 800 |
| 27 | 1.6.3 | Pisanje programskog koda |  | 30d | 2014-05-06 A | 2014-06-11 A | 26 | 100% |  |  | Ivan | 240h | 240h | 24,000 | 24,000 |
| 28 | 1.6.4 | Testiranje aplikacije |  | 3d | 2014-06-11 A | 2014-06-16 A | 27 | 100% |  |  | Ivan | 24h | 24h | 2,400 | 2,400 |
| 29 | 1.6.5 | Dorada aplikacije |  | 5d | 2014-06-16 A | 2014-06-20 A | 28 | 100% |  |  | Ivan | 40h | 40h | 4,000 | 4,000 |
| 30 | 1.6.6 | Sastanak sa klijentom - prezentacija |  | 1d | 2014-06-23 A | 2014-06-23 A | 29 | 100% |  |  | Ivan | 8h | 8h | 800 | 800 |
| 31 | 1.6.7 | Dorada aplikacije |  | 2d | 2014-06-23 A | 2014-06-25 A | 30 | 100% |  |  | Ivan | 16h | 16h | 1,600 | 1,600 |
| 32 | 1.6.8 | Završno testiranje aplikacije |  | 3d | 2014-06-25 A | 2014-06-30 A | 31 | 100% |  |  | Ivan | 24h | 24h | 2,400 | 2,400 |
| 33 | 1.6.9 | Izrada dokumentacije projekta |  | 3d | 2014-06-30 A | 2014-07-02 A | 32 | 100% |  |  | Ivan | 24h | 24h | 2,400 | 2,400 |
| 34 | 1.6.10 | REALIZACIJA ZAVRŠENA | milestone | 0d | 2014-07-02 A | 2014-07-02 A | 33 | 100% |  |  |  |  |  |  |  |

| ID | WBS | Task | Type | Duration | Start | Finish | Predecessors | Complete | Resources | Work | Actual work | Cost | Actual cost |
| --- | --- | --- | --- | --- | --- | --- | --- | --- | --- | --- | --- | --- | --- |
| 35 | 1.6.11 | **ISPORUKA** |  | 2.62d | 2014-07-03 A | 2014-07-07 A | 34 | 100% |  | 31h | 31h | 2,400 | 2,400 |
| 36 | 1.6.11.1 | Isporuka aplikacije |  | 2d | 2014-07-03 A | 2014-07-04 A | 34 | 100% | Ivan | 16h | 16h | 1,600 | 1,600 |
| 37 | 1.6.11.2 | Sastanak s klijentom - primopredaja |  | 1d | 2014-07-04 A | 2014-07-07 A | 36 | 100% | Ivan; Klijent | 15h | 15h | 800 | 800 |
| 38 | 2 | PROJEKT ZAVRŠEN | milestone | 0d | 2014-07-07 A | 2014-07-07 A | 37 | 100% |  |  |  |  |  |
